# CSM 3.1

Schedule from MS Project, 2005-08-01 to 2006-03-09, A marks actual dates.
NCI

## Calendars

- Standard: Mon-Fri 08:00-12:00, 13:00-17:00; Sat-Sun off. Exceptions (off unless hours are given): 2005-11-11, 2005-11-24 to 2005-11-25, 2005-12-26, 2006-01-02.

## Resources

| Resource |
| --- |
| Vinay |
| Kunal |
| Charles |
| Eric |
| Avinash |
| 100 |
| SAIC |
| Resource 2 |
| Team |
| Resource 3 |
| Brian |
| QA |

## Schedule

| ID | WBS | Task | Type | Duration | Start | Finish | Predecessors | Complete | Remaining | Total slack | Constraint | Resources | Work | Actual work |
| --- | --- | --- | --- | --- | --- | --- | --- | --- | --- | --- | --- | --- | --- | --- |
| 1 | 1 | **CSM Post Release** |  | 35.25d | 2005-08-01 A | 2005-09-19 |  | 97% | 1.19d | 118.46d |  |  | 815.96h | 797.96h |
| 2 | 1.1 | **Production Support** |  | 22d | 2005-08-01 A | 2005-08-30 A |  | 100% |  |  |  |  | 132h | 132h |
| 3 | 1.1.1 | Support Activities |  | 22d | 2005-08-01 A | 2005-08-30 A |  | 100% |  |  |  | Vinay [25%]; Kunal [25%]; Eric [25%] | 132h | 132h |
| 4 | 1.2 | **Meetings** |  | 3.2d | 2005-08-01 A | 2005-08-04 A |  | 100% |  |  |  |  | 12.8h | 12.8h |
| 5 | 1.2.1 | Status Meeting |  | 0.1d | 2005-08-01 A | 2005-08-01 A |  | 100% |  |  |  | Vinay; Kunal; Charles; Eric | 3.2h | 3.2h |
| 6 | 1.2.2 | IBM |  | 0.2d | 2005-08-01 A | 2005-08-01 A |  | 100% |  |  |  | Vinay; Kunal; Charles | 4.8h | 4.8h |
| 7 | 1.2.3 | IBM |  | 0.2d | 2005-08-04 A | 2005-08-04 A |  | 100% |  |  | start no earlier than 2005-08-04 | Vinay; Kunal; Charles | 4.8h | 4.8h |
| 8 | 1.3 | Post Release Analysis |  | 1d | 2005-08-11 A | 2005-08-11 A |  | 100% |  |  | start no earlier than 2005-08-11 | Kunal [25%]; Vinay [75%]; Eric [75%] | 14h | 14h |
| 9 | 1.4 | **Presentations/Conferences** |  | 15d | 2005-08-01 A | 2005-08-19 A |  | 100% |  |  |  |  | 184.4h | 184.4h |
| 10 | 1.4.1 | **Preparation** |  | 10d | 2005-08-01 A | 2005-08-12 A |  | 100% |  |  |  |  | 82.4h | 82.4h |
| 11 | 1.4.1.1 | Developer's Boot Camp Presentation |  | 3d | 2005-08-01 A | 2005-08-03 A |  | 100% |  |  |  | Kunal [25%]; Vinay [75%]; Eric [75%] | 22h | 22h |
| 12 | 1.4.1.2 | caCore Architecture Meeting |  | 2d | 2005-08-04 A | 2005-08-05 A | 11 | 100% |  |  |  | Kunal [25%]; Vinay [75%]; Eric [75%] | 28h | 28h |
| 13 | 1.4.1.3 | Review |  | 0.3d | 2005-08-09 A | 2005-08-09 A |  | 100% |  |  | start no earlier than 2005-08-09 | Kunal [75%]; Vinay [75%]; Eric [75%] | 5.4h | 5.4h |
| 14 | 1.4.1.4 | Update |  | 2.5d | 2005-08-09 A | 2005-08-11 A | 13 | 100% |  |  |  | Eric [75%] | 15h | 15h |
| 15 | 1.4.1.5 | Installation Test |  | 1d | 2005-08-12 A | 2005-08-12 A |  | 100% |  |  | start no earlier than 2005-08-12 | Vinay [75%]; Kunal [75%] | 12h | 12h |
| 16 | 1.4.2 | Developer Boot Camp Presentation (NCICB) |  | 1d | 2005-08-15 A | 2005-08-15 A | 10 | 100% |  |  |  | Vinay [75%]; Kunal [75%] | 12h | 12h |
| 17 | 1.4.3 | caBig Architecture F2F |  | 3d | 2005-08-16 A | 2005-08-18 A | 16 | 100% |  |  |  | Vinay [75%]; Kunal [75%]; Eric [75%] | 54h | 54h |
| 18 | 1.4.4 | Developer Boot Camp |  | 2d | 2005-08-18 A | 2005-08-19 A |  | 100% |  |  | start no earlier than 2005-08-18 | Vinay [75%]; Kunal [75%]; Eric [75%] | 36h | 36h |
| 19 | 1.5 | **Best Practices** |  | 3d | 2005-08-08 A | 2005-08-11 A |  | 100% |  |  |  |  | 18h | 18h |
| 20 | 1.5.1 | Create SOP Documents |  | 3d | 2005-08-08 A | 2005-08-11 A | 13FS-1d | 100% |  |  |  | Vinay [75%] | 18h | 18h |
| 21 | 1.6 | SDK Defect Fix/Documentation Update |  | 3d | 2005-08-03 A | 2005-08-05 A |  | 100% |  |  | finish no earlier than 2005-08-08 | Kunal | 18h | 18h |
| 22 | 1.7 | SdK Testing/Documentation Update |  | 5d | 2005-08-08 A | 2005-08-12 A | 21 | 100% |  |  |  | Kunal [50%]; Eric [50%] | 21.33h | 21.33h |
| 23 | 1.8 | Production | milestone | 0d | 2005-08-25 A | 2005-08-25 A |  | 100% |  |  | start no earlier than 2005-08-25 | Kunal |  |  |
| 24 | 1.9 | **Open Source Initiative** |  | 4d | 2005-08-22 A | 2005-08-25 |  | 25% | 3d | 134.71d |  |  | 24h | 6h |
| 25 | 1.9.1 | Define Approach |  | 1d | 2005-08-22 A | 2005-08-22 A | 18 | 100% |  |  |  | Kunal [75%] | 6h | 6h |
| 26 | 1.9.2 | List OS Items for Development |  | 3d | 2005-08-23 | 2005-08-25 | 25 |  |  | 121.25d |  | Kunal [75%] | 18h |  |

| ID | WBS | Task | Type | Duration | Start | Finish | Predecessors | Complete | Remaining | Total slack | Free slack | Constraint | Resources | Work | Actual work |
| --- | --- | --- | --- | --- | --- | --- | --- | --- | --- | --- | --- | --- | --- | --- | --- |
| 27 | 1.10 | **Reference Implementation** |  | 1d | 2005-08-02 A | 2005-08-02 A |  | 100% |  |  |  |  |  | 6h | 6h |
| 28 | 1.10.1 | WrapUp Work |  | 1d | 2005-08-02 A | 2005-08-02 A |  | 100% |  |  |  | start no earlier than 2005-08-02 | Kunal [75%] | 6h | 6h |
| 29 | 1.11 | **Requirement Gathering/Scope** |  | 18.25d | 2005-08-22 A | 2005-09-15 | 9 | 99% | 0d | 0d |  |  |  | 308.5h | 308.5h |
| 30 | 1.11.1 | Gather/Writeup Requirements |  | 7d | 2005-08-22 A | 2005-08-30 A |  | 100% |  |  |  |  | Vinay [75%]; Kunal [75%]; Eric [75%] | 126h | 126h |
| 31 | 1.11.2 | Internal Review/Updates |  | 2d | 2005-08-31 A | 2005-09-01 A | 30 | 100% |  |  |  |  | Vinay [75%]; Kunal [75%]; Eric [75%] | 36h | 36h |
| 32 | 1.11.3 | Estimation |  | 5d | 2005-09-02 A | 2005-09-08 A | 31 | 100% |  |  |  |  | Vinay [75%]; Kunal [75%]; Eric [75%] | 90h | 90h |
| 33 | 1.11.4 | Requirements Prioritization |  | 0.25d | 2005-09-09 A | 2005-09-09 A | 32 | 100% |  |  |  |  | Avinash; Vinay [75%]; Kunal [75%]; Charles; Eric [75%] | 8.5h | 8.5h |
| 34 | 1.11.5 | Scope Document Development |  | 4d | 2005-09-09 A | 2005-09-15 A | 33 | 100% |  |  |  |  | Vinay [50%]; Kunal [50%]; Eric [50%] | 48h | 48h |
| 35 | 1.11.6 | Scope Document SignOff | milestone | 0d | 2005-09-15 | 2005-09-15 | 34 |  |  | 0d |  |  | Avinash; Charles; Vinay |  |  |
| 36 | 1.12 | **Planning** |  | 17.25d | 2005-08-25 A | 2005-09-19 |  | 99% | 0d | 118.46d |  |  |  | 76.93h | 76.93h |
| 37 | 1.12.1 | Project Plan |  | 10d | 2005-08-25 A | 2005-09-07 A |  | 100% |  |  |  | start no earlier than 2005-08-25 | Charles [10%] | 8h | 8h |
| 38 | 1.12.2 | Project Plan Review |  | 0.2d | 2005-09-08 A | 2005-09-08 A | 37 | 100% |  |  |  |  | Charles; Avinash; Vinay | 4.8h | 4.8h |
| 39 | 1.12.3 | Task Plan |  | 5d | 2005-09-09 A | 2005-09-16 A | 33 | 100% |  |  |  |  | Charles [10%]; Vinay [25%]; Kunal [25%]; Eric [25%] | 30.13h | 30.13h |
| 40 | 1.12.4 | Task Plan Review |  | 1d | 2005-09-16 A | 2005-09-19 A | 39 | 100% |  |  |  |  | Avinash; Vinay [75%]; Kunal [75%]; Charles; Eric [75%] | 34h | 34h |
| 41 | 1.12.5 | Task Plan SignOff | milestone | 0d | 2005-09-19 | 2005-09-19 | 40 |  |  | 105d | 0d |  | Avinash; Charles |  |  |
| 42 | 1.12.6 | Project Plan SignOff | milestone | 0d | 2005-09-19 | 2005-09-19 | 41 |  |  | 105d |  |  | Avinash; Charles |  |  |
| 43 | 2 | **CSM 3.1** |  | 120.46d | 2005-09-15 A | 2006-03-09 | 35 | 7% | 112.17d | 0d |  |  |  | 3162.47h | 280.04h |
| 44 | 2.1 | Production Support |  | 97d | 2005-09-15 | 2006-02-15 |  |  |  | 11.78d |  |  | Kunal [25%] | 194h |  |
| 45 | 2.2 | Gforge Support |  | 104d | 2005-09-15 | 2006-02-15 |  |  |  | 11.78d |  |  | Team [5%] | 41.6h |  |
| 46 | 2.3 | Best Practices/SOPs |  | 104d | 2005-09-15 | 2006-02-15 |  |  |  | 11.78d |  |  | Vinay [50%] | 416h |  |
| 47 | 2.4 | **Elaboration Phase** |  | 74.62d | 2005-09-15 A | 2006-01-04 | 35 | 36% | 47.56d | 45.85d |  |  |  | 512.64h | 209.84h |
| 48 | 2.4.1 | **Iteration 1** |  | 9.2d | 2005-09-15 A | 2005-09-28 |  | 86% | 1.33d | 111.26d |  |  |  | 131.6h | 104.8h |
| 49 | 2.4.1.1 | **Analysis & Design** |  | 9.2d | 2005-09-15 A | 2005-09-28 |  | 86% | 1.33d | 111.26d |  |  |  | 131.6h | 104.8h |
| 50 | 2.4.1.1.1 | **SDK Integration** |  | 9.2d | 2005-09-15 A | 2005-09-28 |  | 86% | 1.33d | 111.26d |  |  |  | 131.6h | 104.8h |
| 51 | 2.4.1.1.1.1 | Documentation & Training Bootcamp |  | 2d | 2005-09-15 A | 2005-09-19 A |  | 100% |  |  |  |  | Eric | 16h | 16h |

| ID | WBS | Task | Type | Duration | Start | Finish | Predecessors | Complete | Remaining | Total slack | Free slack | Constraint | Resources | Work | Actual work |
| --- | --- | --- | --- | --- | --- | --- | --- | --- | --- | --- | --- | --- | --- | --- | --- |
| 52 | 2.4.1.1.1.2 | **Detail Use Case Development** |  | 7.2d | 2005-09-19 A | 2005-09-28 |  | 86% | 1d | 111.26d |  |  |  | 60.8h | 52.8h |
| 53 | 2.4.1.1.1.2.1 | Use Cases |  | 6d | 2005-09-19 A | 2005-09-27 A | 51 | 100% |  |  |  |  | Eric | 48h | 48h |
| 54 | 2.4.1.1.1.2.2 | Use Case Review |  | 0.2d | 2005-09-27 A | 2005-09-27 A | 53 | 100% |  |  |  |  | Eric; Kunal; Vinay | 4.8h | 4.8h |
| 55 | 2.4.1.1.1.2.3 | Update/Baseline Use Cases |  | 1d | 2005-09-27 | 2005-09-28 | 54 |  |  | 25.15d |  |  | Eric | 8h |  |
| 56 | 2.4.1.1.1.3 | **Design** |  | 7.4d | 2005-09-15 A | 2005-09-26 |  | 81% | 1.4d | 110.71d |  |  |  | 54.8h | 36h |
| 57 | 2.4.1.1.1.3.1 | Detail Design |  | 6d | 2005-09-15 A | 2005-09-23 A |  | 100% |  |  |  |  | Kunal [75%] | 36h | 36h |
| 58 | 2.4.1.1.1.3.2 | DD Update Draft Complete | milestone | 0d | 2005-09-23 | 2005-09-23 | 57 |  |  | 110.71d | 0d |  | Kunal [75%] |  |  |
| 59 | 2.4.1.1.1.3.3 | Design Review |  | 0.2d | 2005-09-23 | 2005-09-23 | 58 |  |  | 11.7d | 0d |  | Kunal; Vinay; SAIC; Avinash | 6.4h |  |
| 60 | 2.4.1.1.1.3.4 | Update Design |  | 1d | 2005-09-23 | 2005-09-26 | 59 |  |  | 11.7d | 0d |  | Kunal [75%] | 6h |  |
| 61 | 2.4.1.1.1.3.5 | Design Baselined/Sign Off |  | 0.2d | 2005-09-26 | 2005-09-26 | 60 |  |  | 11.7d | 0d |  | Kunal; Vinay; SAIC; Avinash | 6.4h |  |
| 62 | 2.4.2 | **Iteration 2** |  | 6.2d | 2005-09-23 A | 2005-10-03 |  | 89% | 0.65d | 108.26d |  |  |  | 85.04h | 69.04h |
| 63 | 2.4.2.1 | **Analysis & Design** |  | 6.2d | 2005-09-23 A | 2005-10-03 |  | 89% | 0.65d | 108.26d |  |  |  | 85.04h | 69.04h |
| 64 | 2.4.2.1.1 | **Enhanced Logging** |  | 6.2d | 2005-09-23 A | 2005-10-03 |  | 97% | 0.17d | 108.26d |  |  |  | 53.04h | 45.04h |
| 65 | 2.4.2.1.1.1 | **Detail Use Case Development** |  | 3d | 2005-09-28 A | 2005-10-03 A |  | 100% |  |  |  |  |  | 24h | 24h |
| 66 | 2.4.2.1.1.1.1 | Level 2 Use Cases |  | 3d | 2005-09-28 A | 2005-10-03 A | 52 | 100% |  |  |  |  | Eric | 24h | 24h |
| 67 | 2.4.2.1.1.2 | **Design** |  | 4.4d | 2005-09-23 A | 2005-09-29 |  | 95% | 0.2d | 110.06d |  |  |  | 29.04h | 21.04h |
| 68 | 2.4.2.1.1.2.1 | Detail Design |  | 3d | 2005-09-23 A | 2005-09-28 A | 57 | 100% |  |  |  |  | Vinay [50%] | 12h | 12h |
| 69 | 2.4.2.1.1.2.2 | Design Review |  | 0.2d | 2005-09-28 A | 2005-09-28 A | 68 | 100% |  |  |  |  | Kunal; Vinay; Eric; Charles | 5.04h | 5.04h |
| 70 | 2.4.2.1.1.2.3 | Update Design |  | 1d | 2005-09-28 A | 2005-09-29 A | 69 | 100% |  |  |  |  | Vinay [50%] | 4h | 4h |
| 71 | 2.4.2.1.1.2.4 | Design Baselined/Sign Off |  | 0.2d | 2005-09-29 | 2005-09-29 | 70 |  |  | 93.75d |  |  | Kunal; Vinay; Eric; Charles; Avinash | 8h |  |
| 72 | 2.4.2.1.2 | **Design** |  | 4d | 2005-09-27 A | 2005-09-30 |  | 75% | 1d | 108.71d |  |  |  | 32h | 24h |
| 73 | 2.4.2.1.2.1 | Object Instance Level Security |  | 1d | 2005-09-27 A | 2005-09-27 A |  | 100% |  |  |  | start no earlier than 2005-09-27 | Vinay | 8h | 8h |
| 74 | 2.4.2.1.2.2 | Grid Security |  | 1d | 2005-09-28 A | 2005-09-28 A | 73 | 100% |  |  |  |  | Vinay | 8h | 8h |
| 75 | 2.4.2.1.2.3 | HTTP Request |  | 1d | 2005-09-29 | 2005-09-29 | 74 |  |  | 92.4d | 0d |  | Vinay | 8h |  |
| 76 | 2.4.2.1.2.4 | SOP List |  | 1d | 2005-09-30 A | 2005-09-30 A | 75 | 100% |  |  |  |  | Vinay | 8h | 8h |

| ID | WBS | Task | Type | Duration | Start | Finish | Predecessors | Complete | Remaining | Total slack | Free slack | Constraint | Resources | Work | Actual work |
| --- | --- | --- | --- | --- | --- | --- | --- | --- | --- | --- | --- | --- | --- | --- | --- |
| 77 | 2.4.3 | **Iteration 3** |  | 26.25d | 2005-10-03 A | 2005-11-08 |  | 21% | 20.81d | 82.01d |  |  |  | 56h | 36h |
| 78 | 2.4.3.1 | **Analysis & Design** |  | 26.25d | 2005-10-03 A | 2005-11-08 |  | 21% | 20.81d | 82.01d |  |  |  | 56h | 36h |
| 79 | 2.4.3.1.1 | **Hibernate Upgrade** |  | 16.7d | 2005-10-17 | 2005-11-08 |  |  |  | 82.01d |  |  |  | 16h |  |
| 80 | 2.4.3.1.1.1 | Define Approach |  | 15d | 2005-10-17 | 2005-11-04 |  |  |  | 82.01d | 0d | start no earlier than 2005-10-17 | Charles [10%] | 12h |  |
| 81 | 2.4.3.1.1.2 | Approach Review |  | 0.2d | 2005-11-07 | 2005-11-07 | 80 |  |  | 82.01d | 0d |  | Kunal [75%]; Charles | 2.8h |  |
| 82 | 2.4.3.1.1.3 | Update Approach |  | 1.5d | 2005-11-07 | 2005-11-08 | 81 |  |  | 82.01d | 0d |  | Charles [10%] | 1.2h |  |
| 83 | 2.4.3.1.1.4 | Approach Baselined/Sign Off | milestone | 0d | 2005-11-08 | 2005-11-08 | 82 |  |  | 82.01d |  |  | Charles |  |  |
| 84 | 2.4.3.1.2 | **Authorization Caching** |  | 5d | 2005-10-03 A | 2005-10-10 |  | 90% | 0.5d | 28.9d |  |  |  | 40h | 36h |
| 85 | 2.4.3.1.2.1 | **Detail Use Case Development** |  | 5d | 2005-10-03 A | 2005-10-10 |  | 90% | 0.5d | 28.9d |  |  |  | 40h | 36h |
| 86 | 2.4.3.1.2.1.1 | Use Case # |  | 5d | 2005-10-03 A | 2005-10-10 | 66 | 90% | 0.5d | 16.87d | 0d |  | Eric | 40h | 36h |
| 87 | 2.4.4 | **Iteration 4** |  | 57.42d | 2005-10-10 | 2006-01-04 |  |  |  | 28.9d |  |  |  | 240h |  |
| 88 | 2.4.4.1 | **Test Plan** |  | 57.42d | 2005-10-10 | 2006-01-04 | 86 |  |  | 28.9d |  |  |  | 152h |  |
| 89 | 2.4.4.1.1 | Overall Test Plan |  | 5d | 2005-10-10 | 2005-10-17 |  |  |  | 16.87d | 0d |  | Eric | 40h |  |
| 90 | 2.4.4.1.2 | SDK Integration |  | 3d | 2005-10-17 | 2005-10-20 | 89 |  |  | 93.26d | 0d |  | Eric | 24h |  |
| 91 | 2.4.4.1.3 | Regression Tests for Hibernate Upgrade |  | 2d | 2005-10-20 | 2005-10-24 | 90 |  |  | 93.26d |  |  | Eric | 16h |  |
| 92 | 2.4.4.1.4 | Enhanced Logging |  | 4d | 2005-12-28 | 2006-01-04 | 113 |  |  | 45.85d |  |  | Brian | 32h |  |
| 93 | 2.4.4.1.5 | SOP Check (existing and new) |  | 5d | 2005-11-01 | 2005-11-07 |  |  |  | 13.35d | 0d | start no earlier than 2005-11-01 | Charles | 40h |  |
| 94 | 2.4.4.2 | Cummalative Requirements Document |  | 5d | 2005-11-08 | 2005-11-15 | 93 |  |  | 13.35d | 0d |  | Eric | 40h |  |
| 95 | 2.4.4.3 | Traceability Matrix |  | 6d | 2005-11-16 | 2005-11-23 | 94 |  |  | 13.35d | 11.87d |  | Eric | 48h |  |
| 96 | 2.5 | **Construction Phase** |  | 93.35d | 2005-09-26 A | 2006-02-09 |  | 7% | 87.24d | 19.71d |  |  |  | 1591.44h | 70.2h |
| 97 | 2.5.1 | **Iteration 1** |  | 63.22d | 2005-09-26 A | 2005-12-28 |  | 18% | 52.03d | 49.85d |  |  |  | 489.44h | 70.2h |
| 98 | 2.5.1.1 | **SDK Integration** |  | 63.22d | 2005-09-26 A | 2005-12-28 |  | 20% | 50.66d | 49.85d |  |  |  | 428.64h | 70.2h |
| 99 | 2.5.1.1.1 | **Development and Unit Test** |  | 51.22d | 2005-09-26 A | 2005-12-09 |  | 25% | 38.44d | 61.85d |  |  |  | 289h | 70.2h |
| 100 | 2.5.1.1.1.1 | Merging ListProxy and SDKLIistProxy |  | 6d | 2005-09-26 A | 2005-10-04 | 61 | 80% | 1.2d | 105.91d | 0d |  | Kunal [75%] | 36h | 28.8h |
| 101 | 2.5.1.1.1.2 | Merging ApplicationService and SDKApplicationService |  | 5.75d | 2005-10-04 A | 2005-10-12 | 100 | 80% | 1.15d | 101.31d |  |  | Kunal [75%] | 34.5h | 27.6h |
| 102 | 2.5.1.1.1.3 | Business methods secured at class level |  | 9.17d | 2005-10-21 | 2005-11-03 | 119 |  |  | 1.49d | 0d |  | Kunal [75%] | 55h |  |
| 103 | 2.5.1.1.1.4 | Merge Build file to have single generation process |  | 9d | 2005-11-03 | 2005-11-17 | 102 |  |  | 1.49d | 0d |  | Kunal [75%] | 54h |  |
| 104 | 2.5.1.1.1.5 | Code Review |  | 0.38d | 2005-11-17 | 2005-11-17 | 103 |  |  | 1.49d | 0d |  | Kunal; SAIC | 6h |  |
| 105 | 2.5.1.1.1.6 | Flag to add writeable apis to generated code |  | 4d | 2005-11-17 | 2005-11-23 | 104 |  |  | 1.49d | 0d |  | Kunal [75%] | 24h |  |
| 106 | 2.5.1.1.1.7 | Turn Security off by default |  | 4d | 2005-11-23 | 2005-12-01 | 105 |  |  | 1.49d | 0d |  | Kunal [75%] | 24h |  |
| 107 | 2.5.1.1.1.8 | Enhance Security Error Reporting |  | 2.5d | 2005-12-01 | 2005-12-06 | 106 |  |  | 1.49d | 0d |  | Kunal [75%] | 15h |  |
| 108 | 2.5.1.1.1.9 | Code Merge and Cleanup |  | 5.75d | 2005-11-23 A | 2005-12-09 | 107 | 40% | 3.45d | 1.49d | 0d |  | Kunal [75%] | 34.5h | 13.8h |
| 109 | 2.5.1.1.1.10 | Code Review |  | 0.38d | 2005-12-09 | 2005-12-09 | 108 |  |  | 1.49d | 0d |  | Kunal; SAIC | 6h |  |
| 110 | 2.5.1.1.1.11 | Development and Unit Test Complete | milestone | 0d | 2005-12-09 | 2005-12-09 | 109 |  |  | 1.49d | 0d |  | Kunal [75%] |  |  |

| ID | WBS | Task | Type | Duration | Start | Finish | Predecessors | Total slack | Free slack | Constraint | Resources | Work |
| --- | --- | --- | --- | --- | --- | --- | --- | --- | --- | --- | --- | --- |
| 111 | 2.5.1.1.2 | **Integration Test** |  | 12d | 2005-12-09 | 2005-12-28 |  | 1.49d |  |  |  | 139.64h |
| 112 | 2.5.1.1.2.1 | Develop Integration Tests |  | 2d | 2005-12-09 | 2005-12-13 | 110 | 1.49d | 0d |  | Kunal [75%] | 12h |
| 113 | 2.5.1.1.2.2 | Execute/Review Integration Tests |  | 10d | 2005-12-13 | 2005-12-28 | 112, 95 | 1.49d | 0d |  | Kunal [75%]; Charles; QA | 127.64h |
| 114 | 2.5.1.2 | **CSM Defect Fix** |  | 7d | 2005-10-12 | 2005-10-20 |  | 1.49d |  |  |  | 60.8h |
| 115 | 2.5.1.2.1 | Development and Unit Testing |  | 3d | 2005-10-12 | 2005-10-14 |  | 1.49d | 0d | start no earlier than 2005-10-12 | Kunal | 24h |
| 116 | 2.5.1.2.2 | Review Junit Test Cases |  | 0.2d | 2005-10-18 | 2005-10-18 | 115FS+1d | 97.51d |  |  | Charles; Kunal; Eric | 4.8h |
| 117 | 2.5.1.2.3 | QA Testing |  | 2d | 2005-10-17 | 2005-10-18 | 115 | 1.49d | 0d |  | Eric | 16h |
| 118 | 2.5.1.2.4 | Release Packaging |  | 1d | 2005-10-19 | 2005-10-19 | 117 | 1.49d | 0d |  | Kunal | 8h |
| 119 | 2.5.1.2.5 | Move to Production |  | 1d | 2005-10-20 | 2005-10-20 | 118 | 1.49d | 0d |  | Kunal | 8h |
| 120 | 2.5.2 | **Iteration 2** |  | 30d | 2005-11-14 | 2005-12-28 |  | 37.46d |  |  |  | 240h |
| 121 | 2.5.2.1 | **Audit Trail Enhancement** |  | 30d | 2005-11-14 | 2005-12-28 |  | 37.46d |  |  |  | 240h |
| 122 | 2.5.2.1.1 | Development and Unit Test |  | 20d | 2005-11-14 | 2005-12-13 |  | 37.46d | 0d | start no earlier than 2005-11-14 | Resource 3 | 160h |
| 123 | 2.5.2.1.2 | Development and Unit Test Complete | milestone | 0d | 2005-12-13 | 2005-12-13 | 122 | 37.46d | 0d |  | Resource 3 |  |
| 124 | 2.5.2.1.3 | Develop Integration Test |  | 5d | 2005-12-14 | 2005-12-20 | 123 | 37.46d | 0d |  | Resource 3 | 40h |
| 125 | 2.5.2.1.4 | Execute Integration Tests |  | 5d | 2005-12-21 | 2005-12-28 | 124 | 37.46d | 0d |  | Resource 3 | 40h |
| 126 | 2.5.3 | **Iteration 3** |  | 37d | 2005-11-14 | 2006-01-09 |  | 30.46d |  |  |  | 350h |
| 127 | 2.5.3.1 | **Hibernate Upgrade** |  | 30d | 2005-11-14 | 2005-12-28 |  | 37.46d |  |  |  | 320h |
| 128 | 2.5.3.1.1 | Development and Unit Test |  | 20d | 2005-11-14 | 2005-12-13 |  | 37.46d | 0d | start no earlier than 2005-11-14 | Resource 2 | 160h |
| 129 | 2.5.3.1.2 | Development and Unit Test Complete | milestone | 0d | 2005-12-13 | 2005-12-13 | 128 | 37.46d | 0d |  | Resource 2 |  |
| 130 | 2.5.3.1.3 | Regression/Integration Testing |  | 10d | 2005-12-14 | 2005-12-28 | 129 | 37.46d | 0d |  | Resource 2; Charles | 160h |
| 131 | 2.5.3.2 | **Authorization Caching** |  | 5d | 2006-01-03 | 2006-01-09 |  | 0d |  |  |  | 30h |
| 132 | 2.5.3.2.1 | Gather Requirements |  | 5d | 2006-01-03 | 2006-01-09 | 113 | 0d |  |  | Kunal [75%] | 30h |
| 133 | 2.5.4 | **Iteration 4** |  | 30d | 2005-12-29 | 2006-02-09 |  | 7d |  |  |  | 512h |
| 134 | 2.5.4.1 | **Document Creation** |  | 12.25d | 2005-12-29 | 2006-01-17 |  | 37.46d |  |  |  | 208h |
| 135 | 2.5.4.1.1 | SDK Programmers Guide |  | 10d | 2005-12-29 | 2006-01-12 | 125 | 37.46d | 0d |  | Resource 3 | 80h |
| 136 | 2.5.4.1.2 | Review |  | 0.25d | 2006-01-13 | 2006-01-13 | 135 | 37.46d | 0d |  | Kunal; Resource 3; Resource 2; Charles | 8h |
| 137 | 2.5.4.1.3 | Update from Review |  | 2d | 2006-01-13 | 2006-01-17 | 136 | 37.46d |  |  | Resource 3 | 16h |
| 138 | 2.5.4.1.4 | CSM Guide For Application Developers |  | 10d | 2005-12-29 | 2006-01-12 | 130 | 37.46d | 0d |  | Resource 2 | 80h |
| 139 | 2.5.4.1.5 | Review |  | 0.25d | 2006-01-13 | 2006-01-13 | 138 | 37.46d | 0d |  | Kunal; Resource 3; Resource 2; Charles | 8h |
| 140 | 2.5.4.1.6 | Update From Review |  | 2d | 2006-01-13 | 2006-01-17 | 139 | 37.46d | 0d |  | Resource 2 | 16h |
| 141 | 2.5.4.1.7 | Baseline/SignOff Documents | milestone | 0d | 2006-01-17 | 2006-01-17 | 140 | 37.46d |  |  | Resource 2 |  |

| ID | WBS | Task | Type | Duration | Start | Finish | Predecessors | Total slack | Resources | Work |
| --- | --- | --- | --- | --- | --- | --- | --- | --- | --- | --- |
| 142 | 2.5.4.2 | **QA Testing** |  | 23d | 2006-01-10 | 2006-02-09 |  | 0d |  | 304h |
| 143 | 2.5.4.2.1 | Technical Test Development |  | 10d | 2006-01-10 | 2006-01-23 | 132 | 0d | Kunal [75%] | 60h |
| 144 | 2.5.4.2.2 | Execution/Defect Fixes |  | 10d | 2006-01-24 | 2006-02-06 | 143 | 0d | Resource 3; Kunal [75%]; Resource 2 | 220h |
| 145 | 2.5.4.2.3 | Testing Report Creation |  | 3d | 2006-02-07 | 2006-02-09 | 144 | 19.71d | Resource 3 | 24h |
| 146 | 2.6 | **Transition Phase** |  | 22.71d | 2006-02-07 | 2006-03-09 |  | 0d |  | 406.8h |
| 147 | 2.6.1 | Deployment to Stage |  | 3d | 2006-02-07 | 2006-02-09 | 144 | 0d | Resource 2 | 24h |
| 148 | 2.6.2 | SOP Updates |  | 3d | 2006-02-10 | 2006-02-16 | 147 | 0d | Kunal [75%]; Resource 3 | 28.8h |
| 149 | 2.6.3 | Stage Testing |  | 5d | 2006-02-16 | 2006-02-23 | 148 | 0d | Eric; Resource 3; Kunal [75%]; Resource 2 | 150h |
| 150 | 2.6.4 | Testing Report |  | 2d | 2006-02-23 | 2006-02-27 | 149 | 8d | Resource 3 | 16h |
| 151 | 2.6.5 | **Deployment to Production** |  | 10d | 2006-02-23 | 2006-03-09 |  | 0d |  | 188h |
| 152 | 2.6.5.1 | Update Zope Site |  | 5d | 2006-02-23 | 2006-03-02 | 149 | 0d | Kunal [75%] | 30h |
| 153 | 2.6.5.2 | Work With Operations/ Finalize Builds |  | 3d | 2006-02-23 | 2006-02-28 | 149 | 7d | Resource 2; Resource 3 | 48h |
| 154 | 2.6.5.3 | 21 CFR Part 11 Document Prep |  | 5d | 2006-03-02 | 2006-03-09 | 152 | 0d | Resource 2; Resource 3; Kunal [75%] | 110h |
| 155 | 2.7 | CSM 3.1 Complete | milestone | 0d | 2006-03-09 | 2006-03-09 | 151 | 0d |  |  |
